# timeLineProgettoContatore

Schedule from MS Project, 2021-02-08 to 2021-03-19.

## Calendars

- Standard: Mon-Fri 09:00-13:00, 14:00-18:00; Sat-Sun off.

## Resources

| Resource |
| --- |
| Moscatello Enrico |
| Luppino Vincenzo |
| Angeretti Marco |
| Pignata Marcello |

## Schedule

| ID | WBS | Task | Type | Duration | Start | Finish | Predecessors | Total slack | Free slack | Resources | Work |
| --- | --- | --- | --- | --- | --- | --- | --- | --- | --- | --- | --- |
| 1 | 1 | **Progetto lettura contatore** |  | 26d | 2021-02-08 | 2021-03-15 |  | 0d |  |  | 352h |
| 2 | 1.1 | **1 Materiali** |  | 10d | 2021-02-08 | 2021-02-19 |  | 0d |  |  | 80h |
| 3 | 1.1.1 | 1.1 Ricerca materiali |  | 3d | 2021-02-08 | 2021-02-10 |  | 0d |  | Moscatello Enrico | 24h |
| 4 | 1.1.2 | 1.2 Ordinazione materiali |  | 7d | 2021-02-11 | 2021-02-19 | 3 | 0d |  | Moscatello Enrico | 56h |
| 5 | 1.2 | **2 Realizzazione software** |  | 15d | 2021-02-23 | 2021-03-15 | 4 | 0d |  |  | 160h |
| 6 | 1.2.1 | 2.1 Acquisizione immagine |  | 5d | 2021-02-23 | 2021-03-01 | 15 | 0d |  | Pignata Marcello | 40h |
| 7 | 1.2.2 | 2.2 Elaborazione immagine tramite open CV |  | 5d | 2021-03-02 | 2021-03-08 | 6 | 0d |  | Moscatello Enrico | 40h |
| 8 | 1.2.3 | 2.3 Gestione stand-by del dispositivo |  | 5d | 2021-02-23 | 2021-03-01 | 15 | 10d |  | Angeretti Marco | 40h |
| 9 | 1.2.4 | 2.4 Invio dati al cloud server |  | 5d | 2021-03-09 | 2021-03-15 | 6, 7 | 0d |  | Luppino Vincenzo | 40h |
| 10 | 1.3 | **3 Realizzazione hardware** |  | 11d | 2021-02-22 | 2021-03-08 |  | 0d |  |  | 112h |
| 11 | 1.3.1 | **3.1 Progettazione 3d** |  | 10d | 2021-02-22 | 2021-03-05 | 4 | 5d |  |  | 80h |
| 12 | 1.3.1.1 | 3.1.1 Disegno dell'involucro in 3d |  | 3d | 2021-02-22 | 2021-02-24 |  | 5d | 0d | Luppino Vincenzo | 24h |
| 13 | 1.3.1.2 | 3.1.2 Stampa 3d |  | 7d | 2021-02-25 | 2021-03-05 | 12 | 5d | 0d | Luppino Vincenzo | 56h |
| 14 | 1.3.2 | **3.2 Montaggio hardware** |  | 11d | 2021-02-22 | 2021-03-08 |  | 0d |  |  | 32h |
| 15 | 1.3.2.1 | 3.2.1 Montaggio provvisorio |  | 1d | 2021-02-22 | 2021-02-22 | 4 | 0d |  | Angeretti Marco; Moscatello Enrico | 16h |
| 16 | 1.3.2.2 | 3.2.2 Montaggio completo con involucro 3d |  | 1d | 2021-03-08 | 2021-03-08 | 13, 15 | 5d |  | Luppino Vincenzo; Pignata Marcello | 16h |
| 17 | 2 | 4 Test finali |  | 4d | 2021-03-16 | 2021-03-19 | 8, 9, 16 | 0d |  | Luppino Vincenzo; Pignata Marcello | 64h |
| 18 | 3 | 5 Consegna | milestone | 0d | 2021-03-19 | 2021-03-19 | 17 | 0d |  |  |  |
